# 初稿0.0.1

Schedule from MS Project, 2018-09-18 to 2019-01-13, A marks actual dates.

## Calendars

- 标准: Mon-Fri 08:00-12:00, 13:00-17:00; Sat-Sun off.

## Schedule

| ID | Task | Type | Duration | Start | Finish | Remaining |
| --- | --- | --- | --- | --- | --- | --- |
| 1 | 项目准备 | manual | 9d | 2018-09-19 | 2018-10-01 |  |
| 2 | 人员召集 | manual | 1d | 2018-09-18 | 2018-09-18 |  |
| 3 | 项目准备会议 | manual | 1d | 2018-09-18 | 2018-09-18 |  |
| 4 | 课题选定 | manual | 1d | 2018-09-18 | 2018-09-18 |  |
| 5 | 资源申请与完善 | manual | 1d | 2018-09-18 | 2018-09-18 |  |
| 6 | 软硬件环境落实 | manual | 1d | 2018-09-18 | 2018-09-18 |  |
| 7 | 项目起订 | manual | 1d | 2018-09-18 | 2018-09-18 |  |
| 8 | 小组第一次例会 | manual | 1d | 2018-09-29 | 2018-09-29 |  |
| 9 | 软件需求工程项目计划 | manual | 7d | 2018-09-21 | 2018-09-30 |  |
| 10 | 项目可行性报告 | manual | 7d | 2018-10-07 A | 2018-10-15 | 7d |
| 11 | 小组第二次例会 | manual | 1d | 2018-10-09 | 2018-10-09 |  |
| 12 | UML概述翻转PPT | manual | 5d | 2018-10-09 | 2018-10-15 |  |
| 13 | 项目章程 | manual | 7d | 2018-10-05 | 2018-10-14 |  |
| 14 | 项目总体性计划 | manual | 7d | 2018-10-05 | 2018-10-14 |  |
| 15 | 软件工程计划-初步 | manual | 7d | 2018-10-05 | 2018-10-14 |  |
| 16 | 小组第三次例会 | manual | 1d | 2018-10-16 | 2018-10-16 |  |
| 17 | Rational Rose反转课堂 | manual | 7d | 2018-10-12 | 2018-10-21 |  |
| 18 | QA计划 | manual | 7d | 2018-10-12 | 2018-10-21 |  |
| 19 | 小组第四次例会 | manual | 1d | 2018-10-23 | 2018-10-23 |  |
| 20 | 软件工程计划修改以及评审 | manual | 6d | 2018-10-21 | 2018-10-26 |  |
| 21 | 软件工程需求规格说明书 | manual | 7d | 2018-10-17 | 2018-10-25 |  |
| 22 | UML基础I 翻转课堂 | manual | 7d | 2018-10-19 | 2018-10-28 |  |
| 23 | 软件需求规格说明书修改及评审 | manual | 7d | 2018-10-25 | 2018-11-02 |  |
| 24 | 小组第五次例会 | manual | 1d | 2018-10-30 | 2018-10-30 |  |
| 25 | UML II翻转课堂 | manual | 7d | 2018-10-26 | 2018-11-04 |  |
| 26 | 小组第六次例会 | manual | 1d | 2018-11-06 | 2018-11-06 |  |
| 27 | 小组第七次例会 | manual | 1d | 2018-11-13 | 2018-11-13 |  |
| 28 | 小组第八次例会 | manual | 1d | 2018-11-20 | 2018-11-20 |  |
| 29 | 小组第十一周例会 | manual | 1d | 2018-11-27 | 2018-11-27 |  |
| 30 | SRS需求规格说明 | manual | 7d | 2018-11-23 | 2018-12-02 |  |
| 31 | 小组第十二周例会 | manual | 1d | 2018-12-04 | 2018-12-04 |  |
| 32 | UML 基础III翻转课堂 | manual | 7d | 2018-11-30 | 2018-12-09 |  |
| 33 | 软件需求变更文档 | manual | 7d | 2018-11-30 | 2018-12-09 |  |
| 34 | 小组第十三周例会 | manual | 1d | 2018-12-11 | 2018-12-11 |  |
| 35 | UML基础IIII 翻转课堂 | manual | 7d | 2018-12-07 | 2018-12-16 |  |
| 36 | 软件需求变更文档修改和评审 | manual | 7d | 2018-12-07 | 2018-12-16 |  |
| 37 | 小组第十四周例会 | manual | 1d | 2018-12-18 | 2018-12-18 |  |
| 38 | 软件需求变更文档 | manual | 7d | 2018-12-14 | 2018-12-23 |  |
| 39 | 系统设计与实现计划 | manual | 7d | 2018-12-14 | 2018-12-23 |  |
| 40 | 小组第十五周例会 | manual | 1d | 2018-12-25 | 2018-12-25 |  |
| 41 | 文档改进 | manual | 7d | 2018-12-21 | 2018-12-30 |  |
| 42 | 小组第十六周例会 | manual | 1d | 2019-01-08 | 2019-01-08 |  |
| 43 | 软件概要说明设计 | manual | 7d | 2018-12-28 | 2019-01-06 |  |
| 44 | 测试计划 | manual | 7d | 2018-12-28 | 2019-01-06 |  |
| 45 | 安装部署计划 | manual | 7d | 2018-12-28 | 2019-01-06 |  |
| 46 | 培训计划 | manual | 7d | 2018-12-28 | 2019-01-06 |  |
| 47 | 系统维护计划 | manual | 7d | 2018-12-28 | 2019-01-06 |  |
| 48 | 小组第十七周例会 | manual | 1d | 2019-01-08 | 2019-01-08 |  |
| 49 | 项目总结报告 | manual | 7d | 2019-01-04 | 2019-01-13 |  |
